# заново-5 (6.04)

Schedule from MS Project, 2025-03-24 to 2025-10-14, status date 2025-04-06, costs in тыс. ₽, A marks actual dates.

## Calendars

- Стандартный: Mon-Fri 09:00-13:00, 14:00-18:00; Sat-Sun off.

## Resources

| Resource | Group | Unit | Rate |
| --- | --- | --- | --- |
| Затраты Подрядчиков | Подрядчики | тыс. р | 1 |
| затраты на материалы | Материалы | тыс. р | 1 |
| затраты бригад | Бригады | тыс. р | 1 |
| затраты на механизмы | Механизмы | тыс. р | 1 |
| компании по установке кровли | Подрядчики | тыс. р | 1 |
| компания по озеленению | Подрядчики | тыс. р | 1 |
| плиты | Материалы | шт | 50 |
| сваи | Материалы | шт | 10 |
| кирпичи | Материалы | пч | 30 |
| бригада бетонщиков | Бригады | тыс. р | 2 |
| бригада Каменщиков | Бригады | куб | 2 |
| бригада разнорабочих | Бригады |  | 0.25 |
| Бригада фасадчиков | Бригады |  | 0.5 |
| кран | Механизмы |  | 10 |

## Schedule

| ID | WBS | Task | Type | Duration | Start | Finish | Predecessors | Complete | Remaining | Baseline start | Baseline finish | Baseline duration | Total slack | Free slack | Resources | Work | Actual work | Cost | Baseline cost | Actual cost |
| --- | --- | --- | --- | --- | --- | --- | --- | --- | --- | --- | --- | --- | --- | --- | --- | --- | --- | --- | --- | --- |
| 1 | 1 | **Строительсво коттеджа** |  | 146.03d | 2025-03-24 A | 2025-10-14 |  | 11% | 130.11d | 2025-03-24 | 2025-10-08 | 143d | 0d |  |  | 3528h | 16h | 6,864 | 6,864 | 700 |
| 2 | 1.1 | Начало проекта | milestone | 0d | 2025-03-24 A | 2025-03-24 A |  | 100% |  | 2025-03-24 | 2025-03-24 | 0d |  |  |  |  |  |  |  |  |
| 3 | 1.2 | подписание договора |  | 5d | 2025-03-24 A | 2025-03-28 A |  | 100% |  | 2025-03-24 | 2025-03-28 | 5d |  |  |  |  |  |  |  |  |
| 4 | 1.3 | **устройство фундамента** |  | 27.02d | 2025-03-31 A | 2025-05-07 |  | 54% | 12.53d | 2025-03-31 | 2025-05-01 | 24d | 0d |  |  | 20h | 16h | 1,120 | 1,120 | 700 |
| 5 | 1.3.1 | погружение свай |  | 5.03d | 2025-03-31 A | 2025-04-07 | 3 | 99% | 0.03d | 2025-03-31 | 2025-04-01 | 2d | 0d |  | кран; сваи [20 шт]; бригада бетонщиков [50 тыс. р] | 20h | 16h | 500 | 520 | 400 |
| 6 | 1.3.2 | срубка свай |  | 10.03d | 2025-03-31 A | 2025-04-14 | 5 | 99% | 0.09d | 2025-04-02 | 2025-04-08 | 5d | 0d |  | бригада бетонщиков [50 тыс. р]; затраты на механизмы [60 тыс. р]; затраты на материалы [40 тыс. р] |  |  | 200 | 200 | 130 |
| 7 | 1.3.3 | армирование ростверка |  | 9.03d | 2025-03-31 A | 2025-04-11 | 5 | 79% | 1.92d | 2025-04-02 | 2025-04-07 | 4d | 1d |  | бригада бетонщиков [60 тыс. р]; затраты на материалы [40 тыс. р]; затраты на механизмы [60 тыс. р] |  |  | 220 | 200 | 170 |
| 8 | 1.3.4 | бетонирование ростверка |  | 12d | 2025-04-14 | 2025-04-30 | 6, 7 |  |  | 2025-04-09 | 2025-04-24 | 12d | 0d |  | бригада бетонщиков [50 тыс. р]; затраты на материалы [40 тыс. р]; затраты на механизмы [60 тыс. р] |  |  | 200 | 200 |  |
| 9 | 1.3.5 | набор прочности монолитного ростверка |  | 5d | 2025-04-30 | 2025-05-07 | 8 |  |  | 2025-04-25 | 2025-05-01 | 5d | 0d |  |  |  |  |  |  |  |
| 10 | 1.3.6 | завершен монолитный ростверк | milestone | 0d | 2025-05-07 | 2025-05-07 | 9 |  |  | 2025-05-01 | 2025-05-01 | 0d | 0d |  |  |  |  |  |  |  |
| 11 | 1.4 | **установка каркаса** |  | 30d | 2025-05-07 | 2025-06-18 |  |  |  | 2025-05-02 | 2025-06-12 | 30d | 0d |  |  | 48h |  | 1,984 | 1,984 |  |
| 12 | 1.4.1 | кладка из кирпича под плиту перекрытия |  | 4d | 2025-05-07 | 2025-05-13 | 10 |  |  | 2025-05-02 | 2025-05-07 | 4d | 0d |  | бригада Каменщиков [1 куб]; затраты на материалы [40 тыс. р]; кирпичи [1 пч] |  |  | 72 | 72 |  |
| 13 | 1.4.2 | монтаж плит перекрытия, 1 этаж |  | 2d | 2025-05-13 | 2025-05-15 | 12 |  |  | 2025-05-08 | 2025-05-09 | 2d | 0d |  | кран; плиты [6 шт] | 16h |  | 460 | 460 |  |
| 14 | 1.4.3 | кладка стен и перестенков 1 этажа |  | 8d | 2025-05-15 | 2025-05-27 | 13 |  |  | 2025-05-12 | 2025-05-21 | 8d | 0d |  | бригада Каменщиков [20 куб]; затраты на материалы [40 тыс. р]; кирпичи [5 пч] |  |  | 230 | 230 |  |
| 15 | 1.4.4 | монтаж плит перекрытия, 2 этаж |  | 2d | 2025-05-27 | 2025-05-29 | 14 |  |  | 2025-05-22 | 2025-05-23 | 2d | 0d |  | кран; плиты [6 шт] | 16h |  | 460 | 460 |  |
| 16 | 1.4.5 | кладка стен и перестенков 2 этажа |  | 10d | 2025-05-29 | 2025-06-12 | 15 |  |  | 2025-05-26 | 2025-06-06 | 10d | 0d |  | бригада Каменщиков [20 куб]; затраты на материалы [40 тыс. р]; кирпичи [5 пч] |  |  | 230 | 230 |  |
| 17 | 1.4.6 | монтаж плит перекрытия между 2 этажом |  | 2d | 2025-06-12 | 2025-06-16 | 16 |  |  | 2025-06-09 | 2025-06-10 | 2d | 0d |  | кран; плиты [6 шт] | 16h |  | 460 | 460 |  |
| 18 | 1.4.7 | кладка парапета и вентиляционных шахт |  | 2d | 2025-06-16 | 2025-06-18 | 17 |  |  | 2025-06-11 | 2025-06-12 | 2d | 0d |  | бригада Каменщиков [1 куб]; затраты на материалы [40 тыс. р]; кирпичи [1 пч] |  |  | 72 | 72 |  |
| 19 | 1.4.8 | завершено установка каркаса | milestone | 0d | 2025-06-18 | 2025-06-18 | 18 |  |  | 2025-06-12 | 2025-06-12 | 0d | 0d |  |  |  |  |  |  |  |
| 20 | 1.5 | **монтаж кровли** |  | 41d | 2025-06-18 | 2025-08-14 |  |  |  | 2025-06-13 | 2025-08-08 | 41d | 5.97d |  | затраты на материалы [40 тыс. р]; компании по установке кровли [500 тыс. р]; кран | 100h |  | 1,540 | 1,540 |  |
| 21 | 1.5.1 | монтаж стропильной системы |  | 7d | 2025-06-18 | 2025-06-27 | 19 |  |  | 2025-06-13 | 2025-06-23 | 7d | 5.97d | 0d |  |  |  |  |  |  |
| 22 | 1.5.2 | обустройство слоя пароизоляции |  | 4d | 2025-06-27 | 2025-07-03 | 21 |  |  | 2025-06-24 | 2025-06-27 | 4d | 5.97d | 0d |  |  |  |  |  |  |
| 23 | 1.5.3 | укладка утепляющих материалов |  | 4d | 2025-07-03 | 2025-07-09 | 22 |  |  | 2025-06-30 | 2025-07-03 | 4d | 5.97d | 0d |  |  |  |  |  |  |
| 24 | 1.5.4 | устройство слоя гидроизоляции |  | 3d | 2025-07-09 | 2025-07-14 | 23 |  |  | 2025-07-04 | 2025-07-08 | 3d | 5.97d | 0d |  |  |  |  |  |  |
| 25 | 1.5.5 | утепление кровли со стяжкой |  | 10d | 2025-07-14 | 2025-07-28 | 24 |  |  | 2025-07-09 | 2025-07-22 | 10d | 5.97d | 0d |  |  |  |  |  |  |
| 26 | 1.5.6 | металлочерепица основной кровли |  | 5d | 2025-07-28 | 2025-08-04 | 25 |  |  | 2025-07-23 | 2025-07-29 | 5d | 5.97d | 0d |  |  |  |  |  |  |
| 27 | 1.5.7 | обшивка вентиляционных шахт и установка козырьков |  | 8d | 2025-08-04 | 2025-08-14 | 26 |  |  | 2025-07-30 | 2025-08-08 | 8d | 5.97d | 0d |  |  |  |  |  |  |
| 28 | 1.5.8 | завершён монтаж кровли | milestone | 0d | 2025-08-14 | 2025-08-14 | 27 |  |  | 2025-08-08 | 2025-08-08 | 0d | 5.97d | 0d |  |  |  |  |  |  |

| ID | WBS | Task | Type | Duration | Start | Finish | Predecessors | Baseline start | Baseline finish | Baseline duration | Total slack | Free slack | Deadline | Resources | Work | Cost | Baseline cost |
| --- | --- | --- | --- | --- | --- | --- | --- | --- | --- | --- | --- | --- | --- | --- | --- | --- | --- |
| 29 | 1.6 | **устройство фасада** |  | 84d | 2025-06-18 | 2025-10-14 |  | 2025-06-13 | 2025-10-08 | 84d | 0d |  |  | Бригада фасадчиков [500%]; затраты на материалы [40 тыс. р]; затраты на механизмы [60 тыс. р] | 3360h | 1,780 | 1,780 |
| 30 | 1.6.1 | утепление фасада и грунтовка |  | 62d | 2025-06-18 | 2025-09-12 | 19 | 2025-06-13 | 2025-09-08 | 62d | 0d |  |  |  |  |  |  |
| 31 | 1.6.2 | декоративная штукатурка фасада |  | 7d | 2025-09-12 | 2025-09-23 | 30 | 2025-09-09 | 2025-09-17 | 7d | 0d |  |  |  |  |  |  |
| 32 | 1.6.3 | установка молдинга |  | 15d | 2025-09-23 | 2025-10-14 | 31 | 2025-09-18 | 2025-10-08 | 15d | 0d |  |  |  |  |  |  |
| 33 | 1.6.4 | покраска фасада , грунтовка и установка отмостки |  | 6d | 2025-08-14 | 2025-08-22 | 28 | 2025-08-11 | 2025-08-18 | 6d | 5.97d | 0d |  |  |  |  |  |
| 34 | 1.6.5 | облицовка рваным камнем |  | 4d | 2025-08-22 | 2025-08-28 | 33 | 2025-08-19 | 2025-08-22 | 4d | 5.97d | 0d |  |  |  |  |  |
| 35 | 1.6.6 | завершено устройство фасада | milestone | 0d | 2025-08-28 | 2025-08-28 | 34 | 2025-08-22 | 2025-08-22 | 0d | 5.97d | 0d |  |  |  |  |  |
| 36 | 1.7 | **благоустройство участка** |  | 104d | 2025-05-07 | 2025-09-30 |  | 2025-05-02 | 2025-09-24 | 104d | 10d |  |  | затраты на материалы [40 тыс. р]; компания по озеленению [400 тыс. р] |  | 440 | 440 |
| 37 | 1.7.1 | планирование территории |  | 4d | 2025-05-07 | 2025-05-13 | 10 | 2025-05-02 | 2025-05-07 | 4d | 100d | 0d |  |  |  |  |  |
| 38 | 1.7.2 | устройство тротуаров подъездных путей к гаражу |  | 10d | 2025-05-13 | 2025-05-27 | 37 | 2025-05-08 | 2025-05-21 | 10d | 100d |  |  |  |  |  |  |
| 39 | 1.7.3 | озеленение участка |  | 20d | 2025-08-28 | 2025-09-25 | 35 | 2025-08-25 | 2025-09-19 | 20d | 5.97d | 0d |  |  |  |  |  |
| 40 | 1.7.4 | ограждение участка |  | 3d | 2025-09-25 | 2025-09-30 | 39 | 2025-09-22 | 2025-09-24 | 3d | 5.97d | 0d |  |  |  |  |  |
| 41 | 1.7.5 | завершено благоустройство | milestone | 0d | 2025-09-30 | 2025-09-30 | 40 | 2025-09-24 | 2025-09-24 | 0d | 5.97d | 0d |  |  |  |  |  |
| 42 | 1.8 | Окончание проекта | milestone | 0d | 2025-09-30 | 2025-09-30 | 41 | 2025-09-24 | 2025-09-24 | 0d | 5.97d |  | 2025-10-07 |  |  |  |  |
